# Diplôme - SLO - Santos

How a schedule from GanttProject changed from version to version. A marks actual dates.

## Version 1 (saved 2023-08-21)

Note of the change: Modifications Gantt

| ID | WBS | Task | Duration | Start | Finish | Predecessors | Constraint |
| --- | --- | --- | --- | --- | --- | --- | --- |
| 1 | 1 | **Travail de diplôme** | 34d | 2023-08-21 | 2023-10-06 |  |  |
| 2 |  | Pré-étude | 2d | 2023-08-21 | 2023-08-22 |  |  |
| 3 |  | Schémas | 3d | 2023-08-23 | 2023-08-25 | 2 |  |
| 4 |  | Revue de schémas | 0d | 2023-08-28 | 2023-08-28 | 3 |  |
| 5 |  | PCB | 4d | 2023-08-28 | 2023-08-31 | 4 |  |
| 6 |  | Commandes | 1d | 2023-09-01 | 2023-09-01 | 5 |  |
| 7 |  | Réception PCB | 0d | 2023-09-08 | 2023-09-08 | 6 | start no earlier than 2023-09-08 |
| 8 |  | Montage | 1d | 2023-09-08 | 2023-09-08 | 7 |  |
| 9 |  | Software RPI | 4d | 2023-09-04 | 2023-09-07 | 6 |  |
| 10 |  | Firmware PCB | 5d | 2023-09-11 | 2023-09-15 | 8 |  |
| 11 |  | Mise en service | 11d | 2023-09-19 | 2023-10-03 | 10 |  |
| 12 |  | Documents | 25d | 2023-08-21 | 2023-09-25 |  |  |
| 13 |  | Remise des mémoires | 0d | 2023-09-26 | 2023-09-26 |  |  |
| 14 |  | Remise affiche et résumé | 0d | 2023-09-27 | 2023-09-27 |  |  |
| 15 |  | Portes ouvertes | 0d | 2023-09-29 | 2023-09-29 |  |  |
| 16 |  | Défense orale | 3d | 2023-10-04 | 2023-10-06 |  | start no earlier than 2023-10-04 |

## Version 2 (saved 2023-08-21)

Note of the change: Retouches Gantt et rapport

Last finish stays 2023-10-06.

Changed:

| ID | Task | Finish | Duration | Predecessors | Other |
| --- | --- | --- | --- | --- | --- |
| 12 | Documents | 2023-09-25 → 2023-10-03 (+8d) | 25d → 31d |  | baseline finish 2023-09-25 → 2023-10-03 |
| 16 | Défense orale |  |  | none → 11 |  |

## Version 3 (saved 2023-08-22)

Note of the change: Update 2312_BadgePlace_Gantt.gan

Last finish stays 2023-10-06.

Changed:

| ID | Task | Start | Finish | Duration | Complete |
| --- | --- | --- | --- | --- | --- |
| 1 | **Travail de diplôme** |  |  |  | 0% → 2% |
| 2 | Pré-étude |  | 2023-08-22 → 2023-08-23 (+1d) | 2d → 3d | 0% → 60% |
| 3 | Schémas | 2023-08-23 → 2023-08-24 (+1d) |  | 3d → 2d |  |

## Version 4 (saved 2023-08-23)

Note of the change: Update 2312_BadgePlace_Gantt.gan

Last finish stays 2023-10-06.

Added:

| ID | Task | Duration | Start | Finish | Predecessors | Resources |
| --- | --- | --- | --- | --- | --- | --- |
| 5 | Commandes composants | 1d | 2023-08-28 | 2023-08-28 | 4 | Miguel Santos |
| 7 | Revue PCB | 0d | 2023-09-04 | 2023-09-04 | 6 |  |
| 10 | Modélisation 3D | 2d | 2023-09-04 | 2023-09-05 | 8 | Miguel Santos |

Removed: 7 Réception PCB

Changed:

| ID | Task | Start | Finish | Duration | Complete | Predecessors | Other |
| --- | --- | --- | --- | --- | --- | --- | --- |
| 1 | **Travail de diplôme** |  |  |  | 2% → 3% |  |  |
| 2 | Pré-étude |  |  |  | 60% → 80% |  | baseline finish 2023-08-22 → 2023-08-23 |
| 3 | Schémas |  |  |  |  |  | baseline start 2023-08-23 → 2023-08-24 |
| 6 | PCB | 2023-08-28 → 2023-08-29 (+1d) | 2023-08-31 → 2023-09-01 (+1d) |  |  | 4 → 5 | baseline start 2023-08-28 → 2023-08-29; baseline finish 2023-08-31 → 2023-09-01 |
| 8 | Commande PCB | 2023-09-01 → 2023-09-04 (+3d) | 2023-09-01 → 2023-09-04 (+3d) | 1d → 0d |  | 6 → 7 | was named Commandes; baseline start 2023-09-01 → 2023-09-04; baseline finish 2023-09-01 → 2023-09-04 |
| 9 | Montage & tests | 2023-09-08 → 2023-09-13 (+5d) | 2023-09-08 → 2023-09-14 (+6d) | 1d → 2d |  | Réception PCB → 5, 8FS+7d | was named Montage; baseline start 2023-09-08 → 2023-09-13; baseline finish 2023-09-08 → 2023-09-14 |
| 11 | Software RPI | 2023-09-04 → 2023-09-06 (+2d) | 2023-09-07 → 2023-09-12 (+5d) | 4d → 5d |  | 8 → 10 | baseline start 2023-09-04 → 2023-09-06; baseline finish 2023-09-07 → 2023-09-12 |
| 12 | Firmware PCB | 2023-09-11 → 2023-09-15 (+4d) | 2023-09-15 → 2023-09-22 (+7d) |  |  | 9 → 9, 11 | baseline start 2023-09-11 → 2023-09-15; baseline finish 2023-09-15 → 2023-09-22 |
| 13 | Mise en service | 2023-09-19 → 2023-09-25 (+6d) |  | 11d → 7d |  |  | baseline start 2023-09-19 → 2023-09-25 |

## Version 5 (saved 2023-08-25)

Note of the change: Update 2312_BadgePlace_Gantt.gan

Last finish stays 2023-10-06.

Changed:

| ID | Task | Start | Finish | Duration | Complete |
| --- | --- | --- | --- | --- | --- |
| 1 | **Travail de diplôme** |  |  |  | 3% → 4% |
| 2 | Pré-étude |  | 2023-08-23 → 2023-08-24 (+1d) | 3d → 4d |  |
| 3 | Schémas | 2023-08-24 → 2023-08-25 (+1d) |  | 2d → 1d |  |

## Version 6 (saved 2023-08-30)

Note of the change: Update 2312_BadgePlace_Gantt.gan

Last finish stays 2023-10-06. Complete tasks 0 → 3.

Changed:

| ID | Task | Start | Finish | Duration | Complete | Predecessors | Other |
| --- | --- | --- | --- | --- | --- | --- | --- |
| 1 | **Travail de diplôme** |  |  |  | 4% → 12% |  |  |
| 2 | Pré-étude |  |  |  | 80% → 100% |  |  |
| 3 | Schémas |  | 2023-08-25 → 2023-08-29 (+4d) | 1d → 3d | 0% → 100% |  |  |
| 4 | Revue de schémas | 2023-08-28 → 2023-08-29 (+1d) | 2023-08-28 → 2023-08-29 (+1d) |  |  | 3 → none |  |
| 5 | Commandes composants | 2023-08-28 → 2023-08-29 (+1d) | 2023-08-28 → 2023-08-29 (+1d) |  | 0% → 100% |  |  |
| 6 | PCB | 2023-08-29 → 2023-08-30 (+1d) |  | 4d → 3d |  |  |  |
| 7 | Revue PCB | 2023-09-04 → 2023-09-01 (-3d) | 2023-09-04 → 2023-09-01 (-3d) |  |  | 6 → none |  |
| 8 | Commande PCB | 2023-09-04 → 2023-09-01 (-3d) | 2023-09-04 → 2023-09-01 (-3d) |  |  |  |  |
| 9 | Montage & tests | 2023-09-13 → 2023-09-12 (-1d) | 2023-09-14 → 2023-09-13 (-1d) |  |  |  |  |
| 10 | Modélisation 3D |  |  |  |  |  | constraint none → start no earlier than 2023-09-04 |
| 12 | Firmware PCB | 2023-09-15 → 2023-09-14 (-1d) | 2023-09-22 → 2023-09-21 (-1d) |  |  |  |  |
| 13 | Mise en service | 2023-09-25 → 2023-09-22 (-3d) | 2023-10-03 → 2023-10-02 (-1d) |  |  |  |  |

## Version 7 (saved 2023-09-04)

Note of the change: Update 2312_BadgePlace_Gantt.gan

Last finish stays 2023-10-06. Complete tasks 3 → 7.

Changed:

| ID | Task | Start | Finish | Duration | Complete | Predecessors | Other |
| --- | --- | --- | --- | --- | --- | --- | --- |
| 1 | **Travail de diplôme** |  |  | 34d → 46d | 12% → 19% |  | baseline finish 2023-10-06 → 2023-09-24 |
| 3 | Schémas |  | 2023-08-29 → 2023-08-27 (-2d) |  |  | 2 → none |  |
| 4 | Revue de schémas | 2023-08-29 → 2023-08-28 (-1d) | 2023-08-29 → 2023-08-28 (-1d) |  | 0% → 100% |  | resources Miguel Santos → Miguel Santos; Philippe Bovey |
| 5 | Commandes composants | 2023-08-29 → 2023-08-28 (-1d) | 2023-08-29 → 2023-08-28 (-1d) |  |  | 4 → none |  |
| 6 | PCB | 2023-08-30 → 2023-08-29 (-1d) | 2023-09-01 → 2023-09-03 (+2d) | 3d → 6d | 0% → 100% | 5 → none |  |
| 7 | Revue PCB | 2023-09-01 → 2023-09-03 (+2d) | 2023-09-01 → 2023-09-03 (+2d) |  | 0% → 100% |  | resources none → Miguel Santos; Philippe Bovey |
| 8 | Commande PCB | 2023-09-01 → 2023-09-04 (+3d) | 2023-09-01 → 2023-09-04 (+3d) |  | 0% → 100% | 7 → none |  |
| 9 | Montage & tests | 2023-09-12 → 2023-09-11 (-1d) | 2023-09-13 → 2023-09-12 (-1d) |  |  | 5, 8FS+7d → none |  |
| 10 | Modélisation 3D | 2023-09-04 → 2023-09-09 (+5d) | 2023-09-05 → 2023-09-10 (+5d) |  |  | 8 → none | constraint start no earlier than 2023-09-04 → start no earlier than 2023-09-09 |
| 11 | Software RPI |  | 2023-09-12 → 2023-09-08 (-4d) | 5d → 3d |  | 10 → none | baseline finish 2023-09-12 → 2023-09-10 |
| 12 | Firmware PCB | 2023-09-14 → 2023-09-09 (-5d) | 2023-09-21 → 2023-09-13 (-8d) |  |  | 9, 11 → none | baseline finish 2023-09-22 → 2023-09-20 |
| 13 | Mise en service | 2023-09-22 → 2023-09-14 (-8d) | 2023-10-02 → 2023-09-21 (-11d) |  |  | 12 → none | baseline finish 2023-10-03 → 2023-10-01 |
| 14 | Documents |  | 2023-10-03 → 2023-09-25 (-8d) | 31d → 35d |  |  | baseline finish 2023-10-03 → 2023-09-21 |
